Schedule from MS Project, 2016-12-26 to 2017-05-19.

## Calendars

- Standard: Mon-Fri 08:00-12:00, 13:00-17:00; Sat-Sun off. Exceptions (off unless hours are given): 2017-01-26 (Republic Day).

## Resources

| Resource |
| --- |
| Manish M |
| Kapil T |
| Prachi T |
| Shrutika G |
| Atul S |
| Kunal G |
| Aliyun Team |

## Schedule

| ID | WBS | Task | Type | Duration | Start | Finish | Predecessors | Total slack | Free slack | Resources | Work |
| --- | --- | --- | --- | --- | --- | --- | --- | --- | --- | --- | --- |
| 1 | 1 | **Phase III - Chef Integration- ECS** |  | 104d | 2016-12-26 | 2017-05-19 |  | 0d |  |  | 4284h |
| 2 | 1.1 | Start | milestone | 0h | 2016-12-26 | 2016-12-26 |  | 0d |  |  |  |
| 3 | 1.2 | Project Management, Architect, Scrum Handling, UAT Schedule, Weekly Status Report, Task Review and Project Closure Report |  | 832h | 2016-12-26 | 2017-05-19 | 2 | 0d |  | Manish M | 832h |
| 4 | 1.3 | **Specification, Planning and Environment** |  | 11d | 2016-12-26 | 2017-01-09 |  | 0.5d |  |  | 264h |
| 5 | 1.3.1 | **Requirement Gathering and Analysis** |  | 5d | 2016-12-26 | 2016-12-30 |  | 0.5d |  |  | 120h |
| 6 | 1.3.1.1 | **SSH Implementation Requirement Analysis** |  | 3d | 2016-12-26 | 2016-12-28 |  | 0.5d |  |  | 48h |
| 7 | 1.3.1.1.1 | Requirement Gathering and analysis |  | 24h | 2016-12-26 | 2016-12-28 | 2 | 0.5d | 0d | Atul S; Kapil T | 48h |
| 8 | 1.3.1.2 | **Chef Knife Plugin Requirement Analysis** |  | 2.5d | 2016-12-26 | 2016-12-28 |  | 99d |  |  | 20h |
| 9 | 1.3.1.2.1 | Requirement Gathering and analysis |  | 20h | 2016-12-26 | 2016-12-28 | 2 | 99d | 0d | Prachi T | 20h |
| 10 | 1.3.1.3 | **Chef Kitchen Requirement Analysis** |  | 2.5d | 2016-12-28 | 2016-12-30 |  | 99d |  |  | 20h |
| 11 | 1.3.1.3.1 | Requirement Gathering and analysis |  | 20h | 2016-12-28 | 2016-12-30 | 9 | 99d |  | Prachi T | 20h |
| 12 | 1.3.1.4 | **Chef Ohai Requirement Analysis** |  | 2d | 2016-12-29 | 2016-12-30 |  | 0.5d |  |  | 32h |
| 13 | 1.3.1.4.1 | Requirement Gathering and analysis |  | 16h | 2016-12-29 | 2016-12-30 | 7 | 0.5d | 0d | Atul S; Kapil T | 32h |
| 14 | 1.3.2 | **Functional Specification Document** |  | 6d | 2017-01-02 | 2017-01-09 |  | 0.5d |  |  | 136h |
| 15 | 1.3.2.1 | Create Functional Specification of all 3 modules |  | 40h | 2017-01-02 | 2017-01-06 | 13 | 0.5d | 0d | Atul S; Kapil T; Prachi T | 120h |
| 16 | 1.3.2.2 | FSD Review and Update |  | 8h | 2017-01-09 | 2017-01-09 | 15 | 0.5d | 0d | Atul S; Prachi T | 16h |
| 17 | 1.3.2.3 | Functional Specification Document (FSD) and Approval | milestone | 0h | 2017-01-09 | 2017-01-09 | 16 | 0.5d | 0d |  |  |
| 18 | 1.3.3 | Environment Readiness |  | 8h | 2017-01-09 | 2017-01-09 | 15 | 93d |  | Kapil T | 8h |
| 19 | 1.4 | **Test Plan Ready** |  | 4d | 2017-01-10 | 2017-01-13 |  | 79d |  |  | 64h |
| 20 | 1.4.1 | Test Plan Creation |  | 32h | 2017-01-10 | 2017-01-13 | 17 | 79d | 0d | Kunal G; Shrutika G | 64h |
| 21 | 1.4.2 | Test Plan Ready | milestone | 0h | 2017-01-13 | 2017-01-13 | 20 | 79d | 0d |  |  |
| 22 | 1.5 | **Execute** |  | 85.5d | 2017-01-10 | 2017-05-10 |  | 0.5d |  |  | 2900h |
| 23 | 1.5.1 | **Drop 1 Knife ECS Plugin** |  | 45d | 2017-01-10 | 2017-03-14 |  | 0.5d |  |  | 1568h |
| 24 | 1.5.1.1 | Analyse Aliyun Ruby SDK and Business Logic |  | 24h | 2017-01-10 | 2017-01-12 | 17 | 0.5d | 0d | Atul S; Kapil T; Prachi T | 72h |
| 25 | 1.5.1.2 | Drop 1 Test Cases Creation |  | 80h | 2017-01-16 | 2017-01-30 | 21 | 79d |  | Kunal G; Shrutika G | 160h |

| ID | WBS | Task | Type | Duration | Start | Finish | Predecessors | Total slack | Free slack | Resources | Work |
| --- | --- | --- | --- | --- | --- | --- | --- | --- | --- | --- | --- |
| 26 | 1.5.1.3 | **Implementation** |  | 29d | 2017-01-13 | 2017-02-23 |  | 0.5d |  |  | 696h |
| 27 | 1.5.1.3.1 | Coding and Unit Test Help Content Integration |  | 24h | 2017-01-13 | 2017-01-17 | 24 | 0.5d | 0d | Atul S; Kapil T; Prachi T | 72h |
| 28 | 1.5.1.3.2 | Coding and Unit Testing of Create Server |  | 40h | 2017-01-18 | 2017-01-24 | 27 | 71d | 0d | Prachi T | 40h |
| 29 | 1.5.1.3.3 | Coding and Unit Testing of Server Start |  | 32h | 2017-01-18 | 2017-01-23 | 27 | 0.5d | 0d | Atul S | 32h |
| 30 | 1.5.1.3.4 | Coding and Unit Testing of Server Stop |  | 40h | 2017-01-24 | 2017-01-31 | 29 | 0.5d | 0d | Atul S | 40h |
| 31 | 1.5.1.3.5 | Coding and Unit Testing of Server Restart |  | 32h | 2017-02-01 | 2017-02-06 | 30 | 0.5d | 0d | Atul S | 32h |
| 32 | 1.5.1.3.6 | Coding and Unit Testing of Server Instance Status |  | 32h | 2017-01-18 | 2017-01-23 | 27 | 0.5d | 0d | Kapil T | 32h |
| 33 | 1.5.1.3.7 | Coding and Unit Testing of Delete |  | 40h | 2017-01-24 | 2017-01-31 | 32 | 0.5d | 0d | Kapil T | 40h |
| 34 | 1.5.1.3.8 | Coding and Unit Testing of Instance List |  | 40h | 2017-01-25 | 2017-02-01 | 28 | 71d | 0d | Prachi T | 40h |
| 35 | 1.5.1.3.9 | Coding and Unit Testing of Flavor List |  | 24h | 2017-02-07 | 2017-02-09 | 31 | 0.5d | 0d | Atul S | 24h |
| 36 | 1.5.1.3.10 | Coding and Unit Testing of Image List |  | 24h | 2017-02-10 | 2017-02-14 | 35 | 0.5d | 0d | Atul S; Prachi T | 48h |
| 37 | 1.5.1.3.11 | Coding and Unit Testing of Region List |  | 48h | 2017-02-02 | 2017-02-09 | 34 | 71d |  | Prachi T | 48h |
| 38 | 1.5.1.3.12 | Coding and Unit Testing of Security Group List |  | 32h | 2017-02-15 | 2017-02-20 | 36, 40 | 0.5d | 0d | Atul S; Kapil T; Prachi T | 96h |
| 39 | 1.5.1.3.13 | Coding and Unit Testing of SSH Implementation with other method |  | 40h | 2017-02-01 | 2017-02-07 | 33 | 0.5d | 0d | Kapil T | 40h |
| 40 | 1.5.1.3.14 | Coding and Unit Testing of Bootstraping ECS Node |  | 40h | 2017-02-08 | 2017-02-14 | 39 | 0.5d | 0d | Kapil T | 40h |
| 41 | 1.5.1.3.15 | Code Integration and Unit Test Functionality |  | 24h | 2017-02-21 | 2017-02-23 | 38 | 0.5d | 0d | Atul S; Kapil T; Prachi T | 72h |
| 42 | 1.5.1.4 | **Testing, Bug fixing and stabalization** |  | 19d | 2017-02-06 | 2017-03-02 |  | 0.5d |  |  | 408h |
| 43 | 1.5.1.4.1 | Testing Knief Plugin Commands |  | 144h | 2017-02-06 | 2017-03-01 | 41FS-112h | 0.5d | 0d | Kunal G; Shrutika G | 288h |
| 44 | 1.5.1.4.2 | Drop 1 Bug fixing and stabalization |  | 40h | 2017-02-24 | 2017-03-02 | 43FF+8h | 0.5d | 0d | Atul S; Kapil T; Prachi T | 120h |
| 45 | 1.5.1.5 | Create help document |  | 24h | 2017-03-03 | 2017-03-07 | 44 | 0.5d | 0d | Prachi T; Atul S; Kapil T | 72h |
| 46 | 1.5.1.6 | Milestone 1 – Knife ECS Integration Release | milestone | 0h | 2017-03-07 | 2017-03-07 | 45 | 0.5d | 0d |  |  |
| 47 | 1.5.1.7 | UAT - Knife ECS - UAT Support and Feedback Implementation for Knife ECS Plugin |  | 40h | 2017-03-08 | 2017-03-14 | 46 | 0.5d | 0d | Aliyun Team; Kapil T; Kunal G; Shrutika G | 160h |
| 48 | 1.5.2 | **Drop 2 Kitchen ECS Driver** |  | 40.5d | 2017-03-15 | 2017-05-10 |  | 0.5d |  |  | 860h |
| 49 | 1.5.2.1 | Drop 2 Test Cases Creation |  | 64h | 2017-03-15 | 2017-03-24 | 47 | 40d |  | Kunal G | 64h |

| ID | WBS | Task | Type | Duration | Start | Finish | Predecessors | Total slack | Free slack | Resources | Work |
| --- | --- | --- | --- | --- | --- | --- | --- | --- | --- | --- | --- |
| 50 | 1.5.2.2 | **Implementation** |  | 28d | 2017-03-15 | 2017-04-21 | 45 | 0.5d |  |  | 448h |
| 51 | 1.5.2.2.1 | Coding and Unit Testing CentOS platform |  | 64h | 2017-03-15 | 2017-03-24 | 47 | 0.5d | 0d | Prachi T | 64h |
| 52 | 1.5.2.2.2 | Coding and Unit Testing Debian platform |  | 64h | 2017-03-15 | 2017-03-24 | 47 | 0.5d | 0d | Atul S | 64h |
| 53 | 1.5.2.2.3 | Coding and Unit Testing FreeBSD platform |  | 64h | 2017-03-27 | 2017-04-05 | 52 | 0.5d | 0d | Atul S | 64h |
| 54 | 1.5.2.2.4 | Coding and Unit Testing Ubuntu platform |  | 64h | 2017-03-27 | 2017-04-05 | 51 | 0.5d | 0d | Prachi T | 64h |
| 55 | 1.5.2.2.5 | Coding and Unit Testing Windows platform |  | 64h | 2017-04-06 | 2017-04-17 | 53 | 0.5d | 0d | Atul S | 64h |
| 56 | 1.5.2.2.6 | Coding and Unit Testing Aliyun Linux platform |  | 64h | 2017-04-06 | 2017-04-17 | 54 | 0.5d | 0d | Prachi T | 64h |
| 57 | 1.5.2.2.7 | Code Integration and Unit Test Functionality |  | 32h | 2017-04-18 | 2017-04-21 | 55, 56 | 0.5d | 0d | Atul S; Prachi T | 64h |
| 58 | 1.5.2.3 | **Testing, Bug fixing and stabalization** |  | 25.5d | 2017-04-05 | 2017-05-10 |  | 0.5d |  |  | 268h |
| 59 | 1.5.2.3.1 | Testing Drop 2 functionality |  | 204h | 2017-04-05 | 2017-05-10 | 57FS-104h | 0.5d | 0d | Kunal G | 204h |
| 60 | 1.5.2.3.2 | Drop 2 Bug fixing and stabalization |  | 32h | 2017-05-04 | 2017-05-10 | 59FF | 0.5d | 0d | Atul S; Prachi T | 64h |
| 61 | 1.5.2.4 | Create help document |  | 40h | 2017-04-24 | 2017-04-28 | 57 | 8d | 0d | Atul S; Prachi T | 80h |
| 62 | 1.5.2.5 | Kitchen ECS Driver Release | milestone | 0h | 2017-05-10 | 2017-05-10 | 60 | 0.5d | 0d |  |  |
| 63 | 1.5.3 | **Drop 3 Ohai Custom Plugin** |  | 38d | 2017-03-15 | 2017-05-05 |  | 3d |  |  | 472h |
| 64 | 1.5.3.1 | Drop 3 Test Cases Creation |  | 48h | 2017-03-15 | 2017-03-22 | 47 | 42d |  | Shrutika G | 48h |
| 65 | 1.5.3.2 | **Implementation** |  | 23d | 2017-03-15 | 2017-04-14 |  | 3d |  |  | 184h |
| 66 | 1.5.3.2.1 | Coding and Unit Testing Ohai Custom Plugin |  | 80h | 2017-03-15 | 2017-03-28 | 47 | 3d | 0d | Kapil T | 80h |
| 67 | 1.5.3.2.2 | Coding and Unit Testing of Additional features of Ohai |  | 40h | 2017-03-29 | 2017-04-04 | 66 | 3d | 0d | Kapil T | 40h |
| 68 | 1.5.3.2.3 | Code Integration and Unit Test Functionality |  | 64h | 2017-04-05 | 2017-04-14 | 67 | 3d | 0d | Kapil T | 64h |
| 69 | 1.5.3.3 | **Testing, Bug fixing and stabalization** |  | 15d | 2017-04-10 | 2017-04-28 |  | 3d |  |  | 160h |
| 70 | 1.5.3.3.1 | Testing Drop 3 functionality |  | 120h | 2017-04-10 | 2017-04-28 | 68FS-40h | 3d | 0d | Shrutika G | 120h |
| 71 | 1.5.3.3.2 | Drop 3 Bug fixing and stabalization |  | 40h | 2017-04-24 | 2017-04-28 | 70FF | 3d | 0d | Kapil T | 40h |
| 72 | 1.5.3.4 | Create help document |  | 40h | 2017-05-01 | 2017-05-05 | 71 | 3d | 0d | Kapil T; Shrutika G | 80h |
| 73 | 1.5.3.5 | Ohai custom Plugin Release | milestone | 0h | 2017-05-05 | 2017-05-05 | 72 | 3d | 2.5d |  |  |
| 74 | 1.6 | Kitchen ECS Driver and Ohai custom Plugin Release | milestone | 0h | 2017-05-10 | 2017-05-10 | 73, 62 | 0.5d | 0d |  |  |
| 75 | 1.7 | UAT - Kitchen ECS Driver and Ohai custom Plugin |  | 40h | 2017-05-10 | 2017-05-17 | 74 | 0.5d | 0d | Aliyun Team | 40h |

| ID | WBS | Task | Type | Duration | Start | Finish | Predecessors | Total slack | Free slack | Resources | Work |
| --- | --- | --- | --- | --- | --- | --- | --- | --- | --- | --- | --- |
| 76 | 1.8 | **Close** |  | 7d | 2017-05-10 | 2017-05-19 |  | 0.5d |  |  | 184h |
| 77 | 1.8.1 | User Guide and Deployment Guide |  | 40h | 2017-05-10 | 2017-05-17 | 75FF | 2.5d |  | Kapil T | 40h |
| 78 | 1.8.2 | UAT Fixing, testing and post release support |  | 48h | 2017-05-11 | 2017-05-19 | 75SS+8h, 75 | 0.5d | 0d | Prachi T; Kunal G; Shrutika G | 144h |
| 79 | 1.8.3 | Delivering User Guide, UAT fixing and final sign-off | milestone | 0h | 2017-05-19 | 2017-05-19 | 78 | 0.5d |  |  |  |
